# 雷龙

Schedule from a web Gantt chart, 2025-07-17 to 2025-12-31.
Every day is a working day

## Schedule

| ID | WBS | Task | Duration | Start | Finish | Predecessors | Complete | Status |
| --- | --- | --- | --- | --- | --- | --- | --- | --- |
| 2 | 1 | **设计** | 40d | 2025-07-17 | 2025-08-25 |  | 100% | done |
| 3 | 1.1 | Kick OFF | 2d | 2025-07-17 | 2025-07-18 |  | 100% | done |
| 4 | 1.2 | PDK layout | 7d | 2025-07-17 | 2025-07-23 |  | 100% | done |
| 5 | 1.3 | CP probe card--悬臂针 | 33d | 2025-07-17 | 2025-08-18 |  | 100% | done |
| 6 | 1.4 | CP probe card--垂直针 | 40d | 2025-07-17 | 2025-08-25 |  | 100% | done |
| 7 | 2 | **摸底研究** | 60d | 2025-07-28 | 2025-09-25 |  | 100% | done |
| 8 | 2.1 | **ZH 摸底** | 60d | 2025-07-28 | 2025-09-25 |  | 100% | done |
| 9 | 2.1.1 | WAFER PROCESS | 14d | 2025-07-28 | 2025-08-10 |  | 100% | done |
| 10 | 2.1.2 | PKG | 30d | 2025-08-12 | 2025-09-10 |  | 100% | done |
| 11 | 2.1.3 | FT | 2d | 2025-09-11 | 2025-09-12 |  | 100% | done |
| 12 | 2.1.4 | AE 测试 | 13d | 2025-09-13 | 2025-09-25 |  | 100% | done |
| 13 | 2.2 | **Suz 摸底** | 59d | 2025-07-29 | 2025-09-25 |  | 100% | done |
| 14 | 2.2.1 | Wafer process | 18d | 2025-07-29 | 2025-08-15 |  | 100% | done |
| 15 | 2.2.2 | PKG | 23d | 2025-08-19 | 2025-09-10 |  | 100% | done |
| 16 | 2.2.3 | FT | 2d | 2025-09-11 | 2025-09-12 |  | 100% | done |
| 17 | 2.2.4 | AE 测试 | 14d | 2025-09-12 | 2025-09-25 |  | 100% | done |
| 18 | 3 | **pre qual. lot** | 134d | 2025-08-20 | 2025-12-31 |  | 35% |  |
| 19 | 3.1 | WAFER PROCESS | 17d | 2025-08-20 | 2025-09-05 |  | 100% | done |
| 20 | 3.2 | CP test | 14d | 2025-09-06 | 2025-09-19 | 19 | 100% | done |
| 21 | 3.3 | PKG | 23d | 2025-09-25 | 2025-10-17 |  | 73% |  |
| 22 | 3.4 | FT | 5d | 2025-10-18 | 2025-10-22 | 21 |  | waiting |
| 23 | 3.5 | RE qual. | 70d | 2025-10-23 | 2025-12-31 | 22 |  | waiting |
| 24 | 3.6 | PE bench test | 9d | 2025-10-23 | 2025-10-31 | 22 |  | waiting |
| 25 | 4 | **1st Qual. lot** | 51d | 2025-10-23 | 2025-12-12 |  |  |  |
| 26 | 4.1 | CP | 6d | 2025-10-23 | 2025-10-28 |  |  |  |
| 27 | 4.2 | PKG+FT | 30d | 2025-10-29 | 2025-11-27 |  |  |  |
| 28 | 4.3 | RE qual. | 16d | 2025-11-27 | 2025-12-12 |  |  |  |
| 29 | 4.4 | PE bench test | 9d | 2025-11-27 | 2025-12-05 |  |  |  |

| ID | WBS | Task | Type | Duration | Start | Finish | Predecessors | Complete | Status |
| --- | --- | --- | --- | --- | --- | --- | --- | --- | --- |
| 30 | 5 | **2nd Qual. lot** |  | 134d | 2025-08-20 | 2025-12-31 |  | 35% |  |
| 31 | 5.1 | WAFER PROCESS |  | 17d | 2025-08-20 | 2025-09-05 |  | 100% |  |
| 32 | 5.2 | CP test |  | 14d | 2025-09-06 | 2025-09-19 | 31 | 100% | waiting |
| 33 | 5.3 | PKG |  | 23d | 2025-09-25 | 2025-10-17 |  | 73% |  |
| 34 | 5.4 | FT |  | 5d | 2025-10-18 | 2025-10-22 | 33 |  | waiting |
| 35 | 5.5 | RE qual. |  | 70d | 2025-10-23 | 2025-12-31 | 34 |  | waiting |
| 36 | 5.6 | PE Bench test |  | 9d | 2025-10-23 | 2025-10-31 | 34 |  | waiting |
| 37 | 6 | **3rd Qual. lot** | fixed end | 134d | 2025-08-20 | 2025-12-31 |  | 35% |  |
| 38 | 6.1 | WAFER PRCESS |  | 17d | 2025-08-20 | 2025-09-05 |  | 100% |  |
| 39 | 6.2 | CP test |  | 14d | 2025-09-06 | 2025-09-19 | 38 | 100% | waiting |
| 40 | 6.3 | PKG |  | 23d | 2025-09-25 | 2025-10-17 |  | 73% |  |
| 41 | 6.4 | FT |  | 5d | 2025-10-18 | 2025-10-22 | 40 |  | waiting |
| 42 | 6.5 | RE qual. |  | 70d | 2025-10-23 | 2025-12-31 | 41 |  | waiting |
| 43 | 6.6 | PE bench test |  | 9d | 2025-10-23 | 2025-10-31 | 41 |  | waiting |
